# Delivery App Launch Plan — Syria

How a schedule from MS Project XML changed from version to version. A marks actual dates.

## Version 1 (saved 2026-09-19)

Note of the change: Add Launch Timeline tab reading the MS Project plan live

| ID | WBS | Task | Duration | Start | Finish | Predecessors | Total float |
| --- | --- | --- | --- | --- | --- | --- | --- |
| 1 | 1 | **Phase 0: Foundation & Company Setup** | 6d | 2026-09-20 | 2026-09-27 |  | 0d |
| 2 |  | Finalize legal entity & commercial registration | 3d | 2026-09-20 | 2026-09-22 |  | 0d |
| 3 |  | Open corporate bank account | 3d | 2026-09-22 | 2026-09-27 | 2 | 85.33d |
| 4 |  | Engage accountant & legal advisor | 1d | 2026-09-20 | 2026-09-20 |  | 89.78d |
| 5 |  | Shortlist & evaluate white-label platform vendors | 3d | 2026-09-20 | 2026-09-22 |  | 34.67d |
| 6 |  | Contract & sign with chosen white-label vendor | 3d | 2026-09-22 | 2026-09-27 | 5 | 34.67d |
| 7 | 2 | **Phase 1: SyTRA Track A Submission (Delivery License)** | 71d | 2026-09-22 | 2026-12-20 |  | 0d |
| 8 |  | Finalize feasibility study, tariff & data-protection docs with company details | 3d | 2026-09-22 | 2026-09-27 | 2 | 0d |
| 9 |  | Gather signatory docs, ID copies, criminal record clearances | 4.63d | 2026-09-22 | 2026-09-29 | 2 | 0.89d |
| 10 |  | Complete SyTRA license application form | 2d | 2026-09-27 | 2026-09-29 | 8 | 0d |
| 11 |  | Pay application review fee | 1d | 2026-09-29 | 2026-09-29 | 10 | 0d |
| 12 |  | MILESTONE: Submit Track A application to SyTRA | 1d | 2026-09-30 | 2026-09-30 | 9, 10, 11 | 0d |
| 13 |  | SyTRA acknowledgment period (up to 15 business days) | 15d | 2026-09-30 | 2026-10-20 | 12 | 0d |
| 14 |  | SyTRA review & decision period (up to 45 business days) | 45d | 2026-10-20 | 2026-12-15 | 13 | 0d |
| 15 |  | MILESTONE: SyTRA preliminary approval received | 1d | 2026-12-15 | 2026-12-16 | 14 | 0d |
| 16 |  | Complete final requirements & pay initial license fee | 3d | 2026-12-16 | 2026-12-20 | 15 | 14.22d |
| 17 |  | MILESTONE: SyTRA License Granted | 0d | 2026-12-20 | 2026-12-20 | 16 | 14.22d |
| 18 | 3 | **Phase 2: White-Label Platform Setup** | 14d | 2026-09-27 | 2026-10-13 |  | 34.67d |
| 19 |  | Brand configuration (logo, colors, app name) | 5d | 2026-09-27 | 2026-10-01 | 6 | 37.33d |
| 20 |  | Set up local hosting within Syria (SyTRA requirement) | 5d | 2026-09-27 | 2026-10-01 | 6 | 34.67d |
| 21 |  | Configure commission & delivery-fee rules | 1d | 2026-10-01 | 2026-10-04 | 19 | 37.33d |
| 22 |  | Integrate payment gateway | 4d | 2026-10-01 | 2026-10-07 | 20 | 34.67d |
| 23 |  | Configure SMS verification & security settings | 4d | 2026-10-01 | 2026-10-07 | 20 | 34.67d |
| 24 |  | Internal QA testing of full app flow | 5d | 2026-10-07 | 2026-10-13 | 21, 22, 23 | 34.67d |
| 25 |  | MILESTONE: Platform Ready for Testing | 0d | 2026-10-13 | 2026-10-13 | 24 | 34.67d |
| 26 | 4 | **Phase 3: Hiring & Operations Setup** | 30d | 2026-09-22 | 2026-10-29 |  | 50.67d |
| 27 |  | Lease office space | 7d | 2026-09-22 | 2026-09-30 | 2 | 73.78d |
| 28 |  | Lease bike storage/warehouse space | 7d | 2026-09-22 | 2026-09-30 | 2 | 50.67d |
| 29 |  | Procure office equipment | 4d | 2026-09-30 | 2026-10-06 | 27 | 73.78d |
| 30 |  | Procure bike-storage equipment | 4d | 2026-09-30 | 2026-10-06 | 28 | 78.22d |
| 31 |  | Procure bikes (40 units) | 9d | 2026-09-30 | 2026-10-12 | 28 | 50.67d |
| 32 |  | Procure mobile phones & POS devices | 14d | 2026-09-30 | 2026-10-19 | 28 | 69.33d |
| 33 |  | Hire Store Mechanics | 5d | 2026-09-30 | 2026-10-07 | 28 | 77.33d |
| 34 |  | Hire Support staff (2) | 5d | 2026-10-06 | 2026-10-12 | 29 | 73.78d |
| 35 |  | Hire Marketing staff (2) | 5d | 2026-10-06 | 2026-10-12 | 29 | 73.78d |
| 36 |  | Hire Accountant (2) | 5d | 2026-10-06 | 2026-10-12 | 29 | 73.78d |
| 37 |  | Recruit riders (target 40) | 9d | 2026-10-12 | 2026-10-22 | 31 | 50.67d |
| 38 |  | Rider onboarding: safety procedures & app training | 5d | 2026-10-22 | 2026-10-29 | 37, 31, 25 | 50.67d |
| 39 |  | MILESTONE: Operations Team & Fleet Ready | 0d | 2026-10-29 | 2026-10-29 | 38 | 50.67d |
| 40 | 5 | **Phase 4: Compliance Finalization (App Accreditation)** | 31d | 2026-10-13 | 2026-11-22 |  | 34.67d |
| 41 |  | Prepare Track B (App Accreditation) documents | 5d | 2026-10-13 | 2026-10-20 | 25 | 39.11d |
| 42 |  | Conduct security penetration test on configured app | 7d | 2026-10-13 | 2026-10-21 | 25 | 34.67d |
| 43 |  | Obtain pentest certificate from accredited security firm | 2d | 2026-10-22 | 2026-10-26 | 42 | 34.67d |
| 44 |  | Finalize bilingual privacy policy & terms of use | 3d | 2026-10-13 | 2026-10-18 | 25 | 40d |
| 45 |  | Sign required regulatory pledges (SSL, info-security policy) | 1d | 2026-10-18 | 2026-10-19 | 44 | 40d |
| 46 |  | MILESTONE: Submit Track B application | 1d | 2026-10-26 | 2026-10-27 | 41, 43, 45 | 34.67d |
| 47 |  | Track B accreditation review period | 18d | 2026-10-27 | 2026-11-22 | 46 | 34.67d |
| 48 |  | MILESTONE: App Accreditation Granted | 0d | 2026-11-22 | 2026-11-22 | 47 | 34.67d |
| 49 | 6 | **Phase 5: SyTRA Decision & Pre-Launch** | 53d | 2026-10-29 | 2027-01-04 |  | 14.22d |
| 50 |  | Notify SyTRA of intended commercial launch date | 1d | 2026-12-16 | 2026-12-16 | 15 | 0d |
| 51 |  | Soft launch / pilot testing with limited riders | 7d | 2026-12-20 | 2026-12-28 | 39, 17, 48 | 14.22d |
| 52 |  | Marketing campaign launch prep | 5d | 2026-10-29 | 2026-11-04 | 39 | 56.89d |
| 53 |  | Address pilot feedback & fixes | 4d | 2026-12-29 | 2027-01-04 | 51 | 14.22d |
| 54 | 7 | **Phase 6: Commercial Launch** | 0d | 2027-01-24 | 2027-01-24 |  | 0d |
| 55 |  | MILESTONE: Commercial Launch (Aleppo) | 0d | 2027-01-24 | 2027-01-24 | 50FS+3d, 53, 52 | 0d |

## Version 2 (saved 2026-09-20)

Note of the change: Fix Gantt header misalignment and re-sync plan data

Last finish 2027-01-24 → 2027-02-02 (+9d).

Added:

| ID | Task | Duration | Start | Finish | Predecessors |
| --- | --- | --- | --- | --- | --- |
| 20 | Platform Installation | 3d | 2026-09-29 | 2026-10-01 | 18, 19 |
| 25 | Google Play Store & Apple App Store | 21d | 2026-10-04 | 2026-11-01 | 24SS |

Removed: 6 Contract & sign with chosen white-label vendor

Changed:

| ID | Task | Start | Finish | Duration | Total float | Predecessors |
| --- | --- | --- | --- | --- | --- | --- |
| 1 | **Phase 0: Foundation & Company Setup** |  | 2026-09-27 → 2026-09-28 (+1d) | 6d → 7d | 0d → 91d |  |
| 2 | Finalize legal entity & commercial registration |  | 2026-09-22 → 2026-09-28 (+6d) | 3d → 7d | 0d → 91d |  |
| 3 | Open corporate bank account | 2026-09-22 → 2026-09-20 (-2d) | 2026-09-27 → 2026-09-22 (-5d) |  | 85.33d → 95d | 2 → none |
| 6 | **Phase 1: SyTRA Track A Submission (Delivery License)** | 2026-09-22 → 2026-09-20 (-2d) | 2026-12-20 → 2026-12-29 (+9d) | 71d → 73d |  |  |
| 7 | Finalize feasibility study, tariff & data-protection docs with company details | 2026-09-22 → 2026-09-20 (-2d) | 2026-09-27 → 2026-09-24 (-3d) | 3d → 5d |  | 2 → none |
| 8 | Gather signatory docs, ID copies, criminal record clearances | 2026-09-22 → 2026-09-20 (-2d) | 2026-09-29 → 2026-09-24 (-5d) | 4.63d → 5d | 0.89d → 0d | 2 → none |
| 9 | Complete SyTRA license application form |  | 2026-09-29 → 2026-09-27 (-2d) | 2d → 1d |  | 7 → 7, 8 |
| 10 | Pay application review fee | 2026-09-29 → 2026-09-28 (-1d) | 2026-09-29 → 2026-09-28 (-1d) |  |  |  |
| 11 | MILESTONE: Submit Track A application to SyTRA | 2026-09-30 → 2026-09-28 (-2d) | 2026-09-30 → 2026-09-28 (-2d) | 1d → 0d |  | 8, 9, 10 → 10 |
| 12 | SyTRA acknowledgment period (up to 15 business days) | 2026-09-30 → 2026-09-29 (-1d) | 2026-10-20 → 2026-10-19 (-1d) |  |  |  |
| 13 | SyTRA review & decision period (up to 45 business days) |  | 2026-12-15 → 2026-12-21 (+6d) |  |  |  |
| 14 | MILESTONE: SyTRA preliminary approval received | 2026-12-15 → 2026-12-21 (+6d) | 2026-12-16 → 2026-12-21 (+5d) | 1d → 0d |  |  |
| 15 | Complete final requirements & pay initial license fee | 2026-12-16 → 2026-12-22 (+6d) | 2026-12-20 → 2026-12-29 (+9d) | 3d → 6d | 14.22d → 25d |  |
| 16 | MILESTONE: SyTRA License Granted | 2026-12-20 → 2026-12-29 (+9d) | 2026-12-20 → 2026-12-29 (+9d) |  | 14.22d → 25d |  |
| 17 | **Phase 2: White-Label Platform Setup** | 2026-09-27 → 2026-09-20 (-7d) | 2026-10-13 → 2026-11-12 (+30d) | 14d → 40d | 34.67d → 23d |  |
| 18 | Brand configuration (logo, colors, app name) | 2026-09-27 → 2026-09-20 (-7d) | 2026-10-01 → 2026-09-28 (-3d) | 5d → 7d | 37.33d → 23d | Contract & sign with chosen white-label vendor → none |
| 19 | Set up local hosting within Syria (SyTRA requirement) | 2026-09-27 → 2026-09-20 (-7d) | 2026-10-01 → 2026-09-22 (-9d) | 5d → 3d | 34.67d → 27d | Contract & sign with chosen white-label vendor → none |
| 21 | Configure commission & delivery-fee rules | 2026-10-01 → 2026-10-04 (+3d) | 2026-10-04 → 2026-10-05 (+1d) | 1d → 2d | 37.33d → 51d | 18 → 20 |
| 22 | Integrate payment gateway | 2026-10-01 → 2026-10-04 (+3d) | 2026-10-07 → 2026-10-12 (+5d) | 4d → 7d | 34.67d → 46d | 19 → 20 |
| 23 | Configure SMS verification & security settings | 2026-10-01 → 2026-10-04 (+3d) | 2026-10-07 → 2026-10-05 (-2d) | 4d → 2d | 34.67d → 51d | 19 → 20 |
| 24 | Internal QA testing of full app flow | 2026-10-07 → 2026-10-04 (-3d) | 2026-10-13 → 2026-11-12 (+30d) | 5d → 30d | 34.67d → 23d | 21, 22, 23 → 20 |
| 26 | MILESTONE: Platform Ready for Testing | 2026-10-13 → 2026-11-12 (+30d) | 2026-10-13 → 2026-11-12 (+30d) |  | 34.67d → 23d | 24 → 21, 22, 23, 24, 25 |
| 27 | **Phase 3: Hiring & Operations Setup** | 2026-09-22 → 2026-09-20 (-2d) | 2026-10-29 → 2027-01-19 (+82d) | 30d → 88d | 50.67d → 10d |  |
| 28 | Lease office space | 2026-09-22 → 2026-09-20 (-2d) | 2026-09-30 → 2026-10-07 (+7d) | 7d → 14d | 73.78d → 67d | 2 → none |
| 29 | Lease bike storage/warehouse space | 2026-09-22 → 2026-09-20 (-2d) | 2026-09-30 → 2026-10-07 (+7d) | 7d → 14d | 50.67d → 67d | 2 → none |
| 30 | Procure office equipment | 2026-09-30 → 2026-12-22 (+83d) | 2026-10-06 → 2026-12-30 (+85d) | 4d → 7d | 73.78d → 24d | 28 → 28FS+10d, 14 |
| 31 | Procure bike-storage equipment | 2026-09-30 → 2026-12-22 (+83d) | 2026-10-06 → 2026-12-30 (+85d) | 4d → 7d | 78.22d → 24d | 29 → 29FS+10d, 14 |
| 32 | Procure bikes (40 units) | 2026-09-30 → 2026-12-22 (+83d) | 2026-10-12 → 2027-01-10 (+90d) | 9d → 14d | 50.67d → 17d | 29 → 14 |
| 33 | Procure mobile phones & POS devices | 2026-09-30 → 2026-12-22 (+83d) | 2026-10-19 → 2027-01-10 (+83d) |  | 69.33d → 17d | 29 → 14 |
| 34 | Hire Store Mechanics | 2026-09-30 → 2026-12-22 (+83d) | 2026-10-07 → 2026-12-24 (+78d) | 5d → 3d | 77.33d → 28d | 29 → 14 |
| 35 | Hire Support staff (2) | 2026-10-06 → 2026-12-22 (+77d) | 2026-10-12 → 2026-12-28 (+77d) |  | 73.78d → 26d | 30 → 14 |
| 36 | Hire Marketing staff (2) | 2026-10-06 → 2026-12-22 (+77d) | 2026-10-12 → 2026-12-28 (+77d) |  | 73.78d → 26d | 30 → 14 |
| 37 | Hire Accountant (2) | 2026-10-06 → 2026-12-22 (+77d) | 2026-10-12 → 2026-12-28 (+77d) |  | 73.78d → 26d | 30 → 14 |
| 38 | Recruit riders (target 40) | 2026-10-12 → 2026-12-22 (+71d) | 2026-10-22 → 2027-01-10 (+80d) | 9d → 14d | 50.67d → 10d | 32 → 14 |
| 39 | Rider onboarding: safety procedures & app training | 2026-10-22 → 2027-01-11 (+81d) | 2026-10-29 → 2027-01-19 (+82d) | 5d → 7d | 50.67d → 10d | 38, 32, 26 → 38 |
| 40 | MILESTONE: Operations Team & Fleet Ready | 2026-10-29 → 2027-01-19 (+82d) | 2026-10-29 → 2027-01-19 (+82d) |  | 50.67d → 10d | 39 → 28, 29, 30, 31, 32, 33, 34, 35, 36, 37, 38, 39 |
| 41 | **Phase 4: Compliance Finalization (App Accreditation)** | 2026-10-13 → 2026-11-15 (+33d) | 2026-11-22 → 2026-12-17 (+25d) | 31d → 25d | 34.67d → 33d |  |
| 42 | Prepare Track B (App Accreditation) documents | 2026-10-13 → 2026-11-15 (+33d) | 2026-10-20 → 2026-11-23 (+34d) | 5d → 7d | 39.11d → 33d |  |
| 43 | Conduct security penetration test on configured app | 2026-10-13 → 2026-11-15 (+33d) | 2026-10-21 → 2026-11-23 (+33d) |  | 34.67d → 33d |  |
| 44 | Obtain pentest certificate from accredited security firm | 2026-10-22 → 2026-11-15 (+24d) | 2026-10-26 → 2026-11-23 (+28d) | 2d → 7d | 34.67d → 33d | 43 → 26 |
| 45 | Finalize bilingual privacy policy & terms of use | 2026-10-13 → 2026-11-15 (+33d) | 2026-10-18 → 2026-11-17 (+30d) |  | 40d → 37d |  |
| 46 | Sign required regulatory pledges (SSL, info-security policy) | 2026-10-18 → 2026-11-15 (+28d) | 2026-10-19 → 2026-11-17 (+29d) | 1d → 3d | 40d → 37d | 45 → 26 |
| 47 | MILESTONE: Submit Track B application | 2026-10-26 → 2026-11-23 (+28d) | 2026-10-27 → 2026-11-23 (+27d) | 1d → 0d | 34.67d → 33d | 42, 44, 46 → 42, 43, 44, 45, 46 |
| 48 | Track B accreditation review period | 2026-10-27 → 2026-11-24 (+28d) | 2026-11-22 → 2026-12-17 (+25d) |  | 34.67d → 33d |  |
| 49 | MILESTONE: App Accreditation Granted | 2026-11-22 → 2026-12-17 (+25d) | 2026-11-22 → 2026-12-17 (+25d) |  | 34.67d → 33d |  |
| 50 | **Phase 5: SyTRA Decision & Pre-Launch** | 2026-10-29 → 2026-11-15 (+17d) | 2027-01-04 → 2027-01-24 (+20d) | 53d → 51d | 14.22d → 7d |  |
| 51 | Notify SyTRA of intended commercial launch date | 2026-12-16 → 2026-12-22 (+6d) | 2026-12-16 → 2026-12-22 (+6d) |  |  |  |
| 52 | Soft launch / pilot testing with limited riders | 2026-12-20 → 2026-11-15 (-35d) | 2026-12-28 → 2026-12-24 (-4d) | 7d → 30d | 14.22d → 23d | 40, 16, 49 → 26 |
| 53 | Marketing campaign launch prep | 2026-10-29 → 2027-01-05 (+68d) | 2026-11-04 → 2027-01-24 (+81d) | 5d → 14d | 56.89d → 7d | 40 → 56SS-21d |
| 54 | Address pilot feedback & fixes | 2026-12-29 → 2026-12-27 (-2d) | 2027-01-04 → 2026-12-31 (-4d) | 4d → 5d | 14.22d → 23d |  |
| 55 | **Phase 6: Commercial Launch** | 2027-01-24 → 2027-02-02 (+9d) | 2027-01-24 → 2027-02-02 (+9d) |  |  |  |
| 56 | MILESTONE: Commercial Launch (Aleppo) | 2027-01-24 → 2027-02-02 (+9d) | 2027-01-24 → 2027-02-02 (+9d) |  |  | 51FS+3d, 54, 53 → 51FS+3d, 1, 6, 17, 27, 41 |

## Version 3 (saved 2026-09-20)

Last finish stays 2027-02-02.

Changed:

| ID | Task | Predecessors |
| --- | --- | --- |
| 56 | MILESTONE: Commercial Launch (Aleppo) | 51FS+3d, 1, 6, 17, 27, 41 → 51FS+30d, 1, 6, 17, 27, 41 |

## Version 4 (saved 2026-09-21)

Last finish stays 2027-02-02.

Added:

| ID | Task | Duration | Start | Finish | Predecessors |
| --- | --- | --- | --- | --- | --- |
| 20 | Purchase Domain | 1d | 2026-09-29 | 2026-09-29 | 18 |

Changed:

| ID | Task | Start | Finish | Duration | Total float | Predecessors |
| --- | --- | --- | --- | --- | --- | --- |
| 17 | **Phase 2: White-Label Platform Setup** |  | 2026-11-12 → 2026-11-15 (+3d) | 40d → 41d | 23d → 32d |  |
| 21 | Platform Installation | 2026-09-29 → 2026-09-30 (+1d) | 2026-10-01 → 2026-10-04 (+3d) |  | 23d → 32d | 18, 19 → 18, 19, 20 |
| 22 | Configure commission & delivery-fee rules | 2026-10-04 → 2026-10-05 (+1d) | 2026-10-05 → 2026-10-06 (+1d) |  | 51d → 60d |  |
| 23 | Integrate payment gateway | 2026-10-04 → 2026-10-05 (+1d) | 2026-10-12 → 2026-10-13 (+1d) |  | 46d → 55d |  |
| 24 | Configure SMS verification & security settings | 2026-10-04 → 2026-10-05 (+1d) | 2026-10-05 → 2026-10-06 (+1d) |  | 51d → 60d |  |
| 25 | Internal QA testing of full app flow | 2026-10-04 → 2026-10-05 (+1d) | 2026-11-12 → 2026-11-15 (+3d) |  | 23d → 32d |  |
| 26 | Google Play Store & Apple App Store | 2026-10-04 → 2026-10-05 (+1d) | 2026-11-01 → 2026-11-02 (+1d) |  | 32d → 41d |  |
| 27 | MILESTONE: Platform Ready for Testing | 2026-11-12 → 2026-11-15 (+3d) | 2026-11-12 → 2026-11-15 (+3d) |  | 23d → 32d |  |
| 28 | **Phase 3: Hiring & Operations Setup** |  | 2027-01-19 → 2027-01-10 (-9d) | 88d → 81d | 10d → 3d |  |
| 39 | Recruit riders (target 40) |  | 2027-01-10 → 2026-12-30 (-11d) | 14d → 7d | 10d → 7d |  |
| 40 | Rider onboarding: safety procedures & app training | 2027-01-11 → 2026-12-31 (-11d) | 2027-01-19 → 2027-01-04 (-15d) | 7d → 3d | 10d → 7d |  |
| 41 | MILESTONE: Operations Team & Fleet Ready | 2027-01-19 → 2027-01-10 (-9d) | 2027-01-19 → 2027-01-10 (-9d) |  | 10d → 3d |  |
| 42 | **Phase 4: Compliance Finalization (App Accreditation)** | 2026-11-15 → 2026-11-16 (+1d) | 2026-12-17 → 2026-12-20 (+3d) |  | 33d → 32d |  |
| 43 | Prepare Track B (App Accreditation) documents | 2026-11-15 → 2026-11-16 (+1d) | 2026-11-23 → 2026-11-24 (+1d) |  | 33d → 32d |  |
| 44 | Conduct security penetration test on configured app | 2026-11-15 → 2026-11-16 (+1d) | 2026-11-23 → 2026-11-24 (+1d) |  | 33d → 32d |  |
| 45 | Obtain pentest certificate from accredited security firm | 2026-11-15 → 2026-11-16 (+1d) | 2026-11-23 → 2026-11-24 (+1d) |  | 33d → 32d |  |
| 46 | Finalize bilingual privacy policy & terms of use | 2026-11-15 → 2026-11-16 (+1d) | 2026-11-17 → 2026-11-18 (+1d) |  | 37d → 36d |  |
| 47 | Sign required regulatory pledges (SSL, info-security policy) | 2026-11-15 → 2026-11-16 (+1d) | 2026-11-17 → 2026-11-18 (+1d) |  | 37d → 36d |  |
| 48 | MILESTONE: Submit Track B application | 2026-11-23 → 2026-11-24 (+1d) | 2026-11-23 → 2026-11-24 (+1d) |  | 33d → 32d |  |
| 49 | Track B accreditation review period | 2026-11-24 → 2026-11-25 (+1d) | 2026-12-17 → 2026-12-20 (+3d) |  | 33d → 32d |  |
| 50 | MILESTONE: App Accreditation Granted | 2026-12-17 → 2026-12-20 (+3d) | 2026-12-17 → 2026-12-20 (+3d) |  | 33d → 32d |  |
| 51 | **Phase 5: SyTRA Decision & Pre-Launch** | 2026-11-15 → 2026-12-22 (+37d) | 2027-01-24 → 2027-01-28 (+4d) | 51d → 28d | 7d → 0d |  |
| 53 | Soft launch / pilot testing with limited riders | 2026-11-15 → 2027-01-11 (+57d) | 2026-12-24 → 2027-01-19 (+26d) | 30d → 7d | 23d → 3d | 27 → 27, 41 |
| 54 | Address pilot feedback & fixes | 2026-12-27 → 2027-01-20 (+24d) | 2026-12-31 → 2027-01-28 (+28d) | 5d → 7d | 23d → 3d |  |
| 57 | MILESTONE: Commercial Launch (Aleppo) |  |  |  |  | 52FS+30d, 1, 6, 17, 28, 42 → 52FS+30d, 1, 6, 17, 28, 42, 54 |

## Version 5 (saved 2026-09-21)

Note of the change: Switch SyTRA figure to flat annual fee; fix recurring 300-day lag

Last finish stays 2027-02-02.

Changed:

| ID | Task | Predecessors |
| --- | --- | --- |
| 57 | MILESTONE: Commercial Launch (Aleppo) | 52FS+30d, 1, 6, 17, 28, 42, 54 → 52FS+3d, 1, 6, 17, 28, 42, 54 |
